# BrillianCRM_Project_chart

Schedule from MS Project, 2015-01-01 to 2015-07-20, costs in €.

## Calendars

- Standard: Mon-Fri 08:00-12:00, 13:00-17:00; Sat-Sun off.

## Resources

| Resource | Rate |
| --- | --- |
| Project manager | 150 |
| Assistant | 75 |
| Consultant 1 | 112.5 |
| Consultant 2 | 112.5 |
| Consultant 3 | 112.5 |
| Consultant 4 | 112.5 |
| Consultant 5 | 112.5 |
| Consultant 6 | 112.5 |
| Consultant 7 | 112.5 |
| Consultant 8 | 112.5 |
| Consultant 9 | 112.5 |
| Consultant 10 | 112.5 |
| Consultant 11 | 112.5 |
| Consultant12 | 112.5 |
| Consultant 13 | 112.5 |
| IT-specialist 1 | 112.5 |
| IT-specialist 2 | 112.5 |
| IT-specialist 3 | 112.5 |
| IT-specialist 4 | 112.5 |
| IT-specialist 5 | 112.5 |

## Schedule

| ID | WBS | Task | Duration | Start | Finish | Predecessors | Total slack | Free slack | Constraint | Resources | Work | Cost |
| --- | --- | --- | --- | --- | --- | --- | --- | --- | --- | --- | --- | --- |
| 1 | 1 | **Initiation phase** | 40d | 2015-01-01 | 2015-02-25 |  | 0d |  |  |  | 696h | 90,600 |
| 2 | 1.1 | Projekt Charter | 12d | 2015-01-01 | 2015-01-16 |  | 28d |  | start no earlier than 2015-01-01 | Project manager | 96h | 14,400 |
| 3 | 1.2 | requirement specification | 5d | 2015-01-01 | 2015-01-07 |  | 27d | 0d |  | Project manager | 40h | 6,000 |
| 4 | 1.2 | functional specification | 30d | 2015-01-01 | 2015-02-11 |  | 0d |  | start no earlier than 2015-01-01 | Project manager | 240h | 36,000 |
| 5 | 1.4 | Staffing | 4d | 2015-02-12 | 2015-02-17 | 4 | 0d |  |  | Project manager | 32h | 4,800 |
| 6 | 1.5 | Stakeholderanalysis | 8d | 2015-01-08 | 2015-01-19 | 3 | 27d |  |  | Project manager; Assistant | 128h | 14,400 |
| 7 | 1.6 | Risk analysis | 2d | 2015-02-18 | 2015-02-19 | 5 | 4d |  |  |  |  |  |
| 8 | 1.7 | Milestoneplanning | 4d | 2015-02-18 | 2015-02-23 | 5 | 2d |  |  | Assistant | 32h | 2,400 |
| 9 | 1.8 | Ressource allocation | 6d | 2015-02-18 | 2015-02-25 | 5 | 0d |  |  | Assistant | 48h | 3,600 |
| 10 | 1.9 | Budgetplanning | 5d | 2015-02-12 | 2015-02-18 | 4 | 5d |  |  | Project manager; Assistant | 80h | 9,000 |
| 11 | 2 | **Planning** | 60d | 2015-02-26 | 2015-05-20 | 1 | 0d |  |  |  | 7032h | 792,300 |
| 12 | 2.1 | Kick-Off Meeting | 2d | 2015-02-26 | 2015-02-27 |  | 0d |  |  | Assistant; Consultant 1; Consultant 2; Consultant 3; Consultant 4; Consultant 5; Consultant 6; Consultant 7; Project manager; IT-specialist 5; IT-specialist 1; IT-specialist 2; IT-specialist 3; IT-specialist 4 | 224h | 25,200 |
| 13 | 2.2 | definition of packages of work | 8d | 2015-03-02 | 2015-03-11 | 12 | 43d | 0d |  | Assistant; Consultant 10; Consultant 11; Consultant 13; Consultant12; IT-specialist 1; IT-specialist 2 | 448h | 48,000 |
| 14 | 2.3 | creation of work breakdown structure | 10d | 2015-03-12 | 2015-03-25 | 13 | 43d | 0d |  | Assistant; Consultant 4; Consultant 5; Consultant 7; Consultant 11; IT-specialist 1; IT-specialist 5 | 560h | 60,000 |
| 15 | 2.4 | detailed timeplanning | 5d | 2015-03-12 | 2015-03-18 | 13 | 88d |  |  | Assistant; Consultant 1; Consultant 2; Consultant 4; Consultant 8; IT-specialist 1; IT-specialist 4; IT-specialist 5 | 320h | 34,500 |
| 16 | 2.5 | selection of supported mobile devices | 2d | 2015-02-26 | 2015-02-27 |  | 101d |  |  | Assistant; Consultant 1; Consultant 2; IT-specialist 1 | 64h | 6,600 |
| 17 | 2.6 | Change Management | 22d | 2015-03-26 | 2015-04-24 | 14 | 43d | 0d |  | Consultant 1; Consultant 2; Consultant 3; Consultant 4; Consultant 5; Consultant 6; IT-specialist 1; IT-specialist 2; IT-specialist 3 | 1584h | 178,200 |
| 18 | 2.7 | Customer analysis | 6d | 2015-03-26 | 2015-04-02 | 14 | 77d |  |  | Consultant 8; Consultant 9; Assistant | 144h | 14,400 |
| 19 | 2.8 | sales force analysis | 3d | 2015-03-26 | 2015-03-30 | 14 | 80d |  |  | Consultant 8; Consultant 9 | 48h | 5,400 |
| 20 | 2.9 | Process analysis | 25d | 2015-03-02 | 2015-04-03 | 12 | 76d |  |  | Consultant 5; Consultant 6; Consultant 7; Consultant 8; Consultant 9; IT-specialist 4; IT-specialist 5; Project manager | 1600h | 187,500 |
| 21 | 2.10 | analysis of data and interfaces | 8d | 2015-03-02 | 2015-03-11 | 12 | 0d |  |  | Consultant 8; Consultant 9; Consultant 10; IT-specialist 4; IT-specialist 5 | 320h | 36,000 |
| 22 | 2.11 | definition of strategy and structure of CRM | 5d | 2015-03-12 | 2015-03-18 | 21 | 88d |  |  | Consultant 1; Consultant 2; Consultant 3; Consultant 10; IT-specialist 2; IT-specialist 3; Project manager | 280h | 33,000 |
| 23 | 2.12 | Processadjustments | 18d | 2015-04-27 | 2015-05-20 | 17 | 43d |  |  | Consultant 10; Consultant 11; Consultant 13; Consultant12; IT-specialist 3 | 720h | 81,000 |
| 24 | 2.13 | creation of datamodel | 8d | 2015-03-12 | 2015-03-23 | 21 | 0d |  |  | Consultant 10; Consultant 11; Consultant 13; Consultant12; IT-specialist 3 | 320h | 36,000 |
| 25 | 2.14 | creation of approach to migration | 5d | 2015-03-24 | 2015-03-30 | 24 | 0d |  |  | Consultant 2; Consultant 4; Consultant 8; IT-specialist 2; IT-specialist 3; Project manager; Consultant 3; Consultant 9; Consultant 13; Consultant12 | 400h | 46,500 |

Notes:
- 2: Vorläufige Zusammenfassung des Scopes, der Verantwortlichen, der Ziele und des Aufgabenbereichs des Projektmanagers. / Projekt Charta wird vom Kunden erstellt.
- 3: In diesem Dokument spezifiziert der Kunde seine Anforderungen an die Anwendung bzw. das Projekt.
- 4: Beschreibung der technischen Anforderungen an das einzuführende CRM-System - z.B. Stammdatenpflege, Kundenanalysen, Vertriebshistorie, Zahlungsverhalten, Schnittstellen, die letztendlich realisiert werden sollen. Daneben werden Kosten, Projektablauf, Projektumfang und jegliche bindende Rahmenbedingungen des Projektes definiert.
- 5: Beim Staffing wird entschieden welche Mitarbeiter von BrillianCRM am Projekt arbeiten werden.
- 6: Beschreibung aller Stakeholder des Projektes, d.h. Personen und Institutionen die Intresse am Projekt haben und Einfluss darauf ausüben können. Es erfolgt eine Einteilung der Stakeholder anhand der Parameter Einfluss auf und Interesse am Projekt.
- 8: Grobe zeitliche Planung von zu erreichenden Meilensteinen über den gesamten Projektverlauf.
- 9: Einteilung von zeitlichen Ressourcen (z.B. Arbeitszeit der MA) im Rahmen des Projektes.
- 10: Einteilung und Zuteilung der finanziellen Mittel für Projektaufgaben z.B. Reisebudget, Anschaffung von Infrastruktur.
- 12: Erstes Treffen der wesentlichen Projektbeteiligten mit dem Ziel alle Anwesenden über die Ziele und Vorgehensweisen im Projekt zu informieren und zu motivieren.
- 13: Die einzelen Arbeitsschritte des Projektes sollten zu Paketen geschnürt werden, um Sturktur in die Arbeitsabläufe zu bringen.
- 14: Der PSP (Projektstrukturplan) gliedert das Projekt in Arbeitspakete und Teilarbeitspakete. Er bilder die Grundlage für eine Zeit- und Ressourcenplanung.
- 15: Zeitlich logische Zuordnung von Arbeitspaketen.
- 17: Aspekte des Change Management in dieser Phase des Projektes beziehen sich darauf, dass Mitarbeiter motiviert werden und Ihnen die Vorteile des CRM klar gemacht werden, um sie für das Projekt zu motivieren.
- 20: Die bisherigen Geschäftsprozesse des Kunden werden sowohl im Bereich Vertrieb als auch in zusammenhängenden Bereichen aufgenommen, um eine grundsätzliche Übersicht der Geschäftsabläufe zu erhalten und potenzielle Verbesserungen aufzudecken.
- 21: Aktuelle Daten des Kunden werden mit dem Ziel, Schlüsse für das neue CRM-System zu ziehen, analysiert. Schnittstellen zu anderen Systemen des Unternehmens bspw. ERP werden analysiert um eine Nutzung zu evaluieren und eine Einbindung zu planen.

| ID | WBS | Task | Duration | Start | Finish | Predecessors | Total slack | Resources | Work | Cost |
| --- | --- | --- | --- | --- | --- | --- | --- | --- | --- | --- |
| 26 | 3 | **Execution** | 60d | 2015-03-31 | 2015-06-22 |  | 0d |  | 5608h | 621,900 |
| 27 | 3.1 | Development | 20d | 2015-03-31 | 2015-04-27 | 25 | 0d | Assistant; Consultant 6; Consultant 8; Consultant 9; Consultant 10; Consultant 11; Consultant 13; Consultant12; IT-specialist 3; IT-specialist 4; IT-specialist 5 | 1760h | 192,000 |
| 28 | 3.2 | Data migration | 5d | 2015-04-28 | 2015-05-04 | 27 | 55d | Assistant; Consultant 1; Consultant 2; Consultant 3; Consultant 4; Consultant 5; IT-specialist 4; IT-specialist 5; Project manager | 360h | 40,500 |
| 29 | 3.3 | implementation of test-environment | 12d | 2015-04-28 | 2015-05-13 | 27 | 0d | Assistant; Consultant 1; Consultant 2; Consultant 3; Consultant 8; Consultant 9; IT-specialist 1; IT-specialist 2; Project manager | 864h | 97,200 |
| 30 | 3.4 | Testing | 10d | 2015-05-14 | 2015-05-27 | 29 | 0d | Assistant; Consultant 1; Consultant 2; Consultant 3; Consultant 9; IT-specialist 1; IT-specialist 2 | 560h | 60,000 |
| 31 | 3.5 | Implementation of live-environment | 5d | 2015-05-28 | 2015-06-03 | 30 | 33d | IT-specialist 1; IT-specialist 2; IT-specialist 3; IT-specialist 4; IT-specialist 5; Consultant 7 | 240h | 27,000 |
| 32 | 3.6 | Staff training | 12d | 2015-05-28 | 2015-06-12 | 30 | 0d | Assistant; Consultant 1; Consultant 2; Consultant 3; Consultant 4; Consultant 5; Consultant 6; Consultant 7; Consultant 8; Consultant 9; Consultant 10; Consultant 11; Consultant 13; Consultant12; Project manager | 1440h | 162,000 |
| 33 | 3.7 | Rollout | 6d | 2015-06-15 | 2015-06-22 | 32 | 0d | Assistant; IT-specialist 1; IT-specialist 2; IT-specialist 3; IT-specialist 4; IT-specialist 5; Project manager; Consultant 7 | 384h | 43,200 |
| 34 | 4 | **project close-out** | 20d | 2015-06-23 | 2015-07-20 | 33 | 0d |  | 2400h | 270,000 |
| 35 | 4.1 | Final approval | 15d | 2015-06-23 | 2015-07-13 | 33 | 0d | Assistant; Consultant 1; Consultant 2; Consultant 3; Consultant 4; Consultant 5; Consultant 6; Consultant 7; Consultant 8; Consultant 9; Project manager; IT-specialist 1; IT-specialist 2; IT-specialist 3; IT-specialist 4 | 1800h | 202,500 |
| 36 | 4.2 | Lessons Learned | 5d | 2015-07-14 | 2015-07-20 | 35 | 0d | Assistant; Consultant 1; Consultant 2; Consultant 3; Consultant 4; Consultant 5; Consultant 6; Consultant 7; Consultant 8; Consultant 9; Project manager; IT-specialist 1; IT-specialist 2; IT-specialist 3; IT-specialist 4 | 600h | 67,500 |
