# brillianCRM_Project_Chart3

Schedule from MS Project, 2015-01-01 to 2015-09-18, costs in €.
Project Organization
DHBW Mannheim

## Calendars

- Standard: Mon-Fri 08:00-12:00, 13:00-17:00; Sat-Sun off.

## Resources

| Resource | Rate |
| --- | --- |
| Project manager | 150 |
| Assistant | 75 |
| Consultant 1 | 112.5 |
| Consultant 2 | 112.5 |
| Consultant 3 | 112.5 |
| Consultant 4 | 112.5 |
| Consultant 5 | 112.5 |
| Consultant 6 | 112.5 |
| Consultant 7 | 112.5 |
| Consultant 8 | 112.5 |
| Consultant 9 | 112.5 |
| Consultant 10 | 112.5 |
| Consultant 11 | 112.5 |
| Consultant 12 | 112.5 |
| Consultant 13 | 112.5 |
| IT specialist 1 | 112.5 |
| IT specialist 2 | 112.5 |
| IT specialist 3 | 112.5 |
| IT specialist 4 | 112.5 |
| IT specialist 5 | 112.5 |
| IT specialist 6 |  |
| IT specialist 7 |  |
| IT specialist 8 |  |
| IT specialist 9 |  |
| IT specialist 10 |  |

## Schedule

| ID | WBS | Task | Type | Duration | Start | Finish | Predecessors | Total slack | Free slack | Resources | Work | Cost |
| --- | --- | --- | --- | --- | --- | --- | --- | --- | --- | --- | --- | --- |
| 1 | 1 | **Initiation phase** |  | 17d | 2015-01-01 | 2015-01-26 |  | 0d |  |  | 424h | 50,400 |
| 2 | 1.1 | Preliminary Targets |  | 3d | 2015-01-01 | 2015-01-05 |  | 0d |  | Project manager | 24h | 3,600 |
| 3 | 1.2 | Define Responsibilities |  | 2d | 2015-01-06 | 2015-01-07 | 2 | 0d |  | Project manager | 16h | 2,400 |
| 4 | 1.3 | Requirements Specification |  | 5d | 2015-01-08 | 2015-01-14 | 3 | 0d |  | Project manager | 40h | 6,000 |
| 5 | 1.4 | Preliminary Budget Estimations |  | 5d | 2015-01-15 | 2015-01-21 | 4 | 2d |  | Project manager; Assistant | 80h | 9,000 |
| 6 | 1.5 | Milestone Planning |  | 3d | 2015-01-15 | 2015-01-19 | 4 | 0d |  | Assistant | 24h | 1,800 |
| 7 | 1.1 | Project Charter |  | 2d | 2015-01-20 | 2015-01-21 | 6 | 0d |  | Project manager | 16h | 2,400 |
| 8 | 1.7 | Kickoff Meeting |  | 2d | 2015-01-22 | 2015-01-23 | 7 | 0d |  | Assistant; Consultant 1; Consultant 2; Consultant 3; Consultant 4; Consultant 5; Consultant 6; Consultant 7; Project manager; IT specialist 5; IT specialist 1; IT specialist 2; IT specialist 3; IT specialist 4 | 224h | 25,200 |
| 9 | 1.8 | End of Kickoff Meeting | milestone, manual | 0d | 2015-01-26 | 2015-01-26 | 8 |  |  |  |  |  |
| 10 | 2 | **Planning** |  | 65d | 2015-01-26 | 2015-04-24 | 1 | 0d |  |  | 5616h | 561,600 |
| 11 | 2.1 | Stakeholder Analysis |  | 2d | 2015-01-26 | 2015-01-27 | 8 | 168d |  | Project manager; Assistant | 32h | 3,600 |
| 12 | 2.2 | Risk Analysis |  | 2d | 2015-01-26 | 2015-01-27 | 8 | 168d |  | Project manager; Assistant | 32h | 3,600 |
| 13 | 2.3 | Define Strategies and Measures |  | 5d | 2015-01-26 | 2015-01-30 | 8 | 0d |  | Project manager | 40h | 6,000 |
| 14 | 2.4 | Define Work Packages |  | 5d | 2015-02-02 | 2015-02-06 | 13 | 0d |  | Assistant; Consultant 8; Consultant 9; Consultant 13; Consultant 10; IT specialist 8; IT specialist 5; IT specialist 4 | 320h | 30,000 |
| 15 | 2.5 | Creation of Work Breakdown Structure |  | 3d | 2015-02-09 | 2015-02-11 | 14 | 0d |  | Assistant; Consultant 4; Consultant 5; Consultant 7; Consultant 6; IT specialist 5 | 144h | 15,300 |
| 16 | 2.6 | Resource Allocation |  | 2d | 2015-02-12 | 2015-02-13 | 15 | 0d |  | Assistant | 16h | 1,200 |
| 17 | 2.7 | Scheduling |  | 5d | 2015-02-16 | 2015-02-20 | 16 | 0d |  | Assistant; Consultant 1; Consultant 2; Consultant 4; Consultant 8; IT specialist 1; IT specialist 4; IT specialist 5 | 320h | 34,500 |
| 18 | 2.8 | Determination of Mobile Devices |  | 5d | 2015-02-23 | 2015-02-27 | 17 | 145d |  | Assistant; Consultant 10; Consultant 11; IT specialist 4 | 160h | 16,500 |
| 19 | 2.9 | Customer Analysis |  | 10d | 2015-02-23 | 2015-03-06 | 17 | 110d | 5d | Consultant 8; Consultant 9; Assistant | 232h | 23,400 |
| 20 | 2.10 | Sales Force Analysis |  | 15d | 2015-02-23 | 2015-03-13 | 17 | 105d | 0d | Consultant 8; Consultant 9 | 240h | 27,000 |
| 21 | 2.11 | Process Analysis |  | 25d | 2015-02-23 | 2015-03-27 | 17 | 2d | 0d | Consultant 5; Consultant 6; Consultant 7; Consultant 11; Consultant 12; IT specialist 7; IT specialist 6; Project manager | 1280h | 103,500 |
| 22 | 2.12 | Data Analysis |  | 15d | 2015-02-23 | 2015-03-13 | 17 | 0d |  | Consultant 7; Consultant 6; Consultant 10; IT specialist 4; IT specialist 5 | 600h | 67,500 |
| 23 | 2.13 | Functional Requirements |  | 15d | 2015-03-30 | 2015-04-17 | 21 | 2d | 0d | Project manager | 120h | 18,000 |
| 24 | 2.14 | Design Customer Relationship Strategy |  | 10d | 2015-03-16 | 2015-03-27 | 19, 20 | 105d | 0d | Consultant 7; Consultant 6; Consultant 5; Consultant 10; IT specialist 6; IT specialist 5; Project manager | 560h | 57,000 |
| 25 | 2.15 | Process Adaptation |  | 20d | 2015-03-30 | 2015-04-24 | 21, 24 | 105d |  | Consultant 10; Consultant 11; Consultant 13; Consultant 12; IT specialist 7 | 800h | 72,000 |
| 26 | 2.16 | Data Model Creation |  | 8d | 2015-03-16 | 2015-03-25 | 22, 17 | 0d |  | Consultant 10; Consultant 11; Consultant 13; Consultant 12; IT specialist 3 | 320h | 36,000 |
| 27 | 2.17 | Creation of Migration Concept |  | 5d | 2015-03-26 | 2015-04-01 | 26 | 0d |  | Consultant 6; Consultant 4; Consultant 7; IT specialist 5; IT specialist 3; Project manager; Consultant 5; Consultant 10; Consultant 13; Consultant 12 | 400h | 46,500 |

Notes:
- 4: In diesem Dokument spezifiziert der Kunde seine Anforderungen an die Anwendung bzw. das Projekt.
- 5: Einteilung und Zuteilung der finanziellen Mittel für Projektaufgaben z.B. Reisebudget, Anschaffung von Infrastruktur.
- 6: Grobe zeitliche Planung von zu erreichenden Meilensteinen über den gesamten Projektverlauf.
- 7: Vorläufige Zusammenfassung des Scopes, der Verantwortlichen, der Ziele und des Aufgabenbereichs des Projektmanagers. / Projekt Charta wird vom Kunden erstellt.
- 8: Erstes Treffen der wesentlichen Projektbeteiligten mit dem Ziel alle Anwesenden über die Ziele und Vorgehensweisen im Projekt zu informieren und zu motivieren.
- 9: Milestone 1
- 11: Beschreibung aller Stakeholder des Projektes, d.h. Personen und Institutionen die Intresse am Projekt haben und Einfluss darauf ausüben können. Es erfolgt eine Einteilung der Stakeholder anhand der Parameter Einfluss auf und Interesse am Projekt.
- 14: Die einzelen Arbeitsschritte des Projektes sollten zu Paketen geschnürt werden, um Sturktur in die Arbeitsabläufe zu bringen.
- 15: Der PSP (Projektstrukturplan) gliedert das Projekt in Arbeitspakete und Teilarbeitspakete. Er bilder die Grundlage für eine Zeit- und Ressourcenplanung.
- 16: Einteilung von zeitlichen Ressourcen (z.B. Arbeitszeit der MA) im Rahmen des Projektes.
- 17: Zeitlich logische Zuordnung von Arbeitspaketen.
- 19: The customer analysis is a part of the actual state analysis.
- 20: The sales force analysis is a part of the actual state analysis.
- 21: Die Prozessanalyse ist ein Teil der Ist-Analyse. / Die bisherigen Geschäftsprozesse des Kunden werden sowohl im Bereich Vertrieb als auch in zusammenhängenden Bereichen aufgenommen, um eine grundsätzliche Übersicht der Geschäftsabläufe zu erhalten und potenzielle Verbesserungen aufzudecken.
- 22: Die Daten-Analyse ist ein Teil der Ist-Analyse. / Aktuelle Daten des Kunden werden mit dem Ziel, Schlüsse für das neue CRM-System zu ziehen, analysiert. Schnittstellen zu anderen Systemen des Unternehmens bspw. ERP werden analysiert um eine Nutzung zu evaluieren und eine Einbindung zu planen.

| ID | WBS | Task | Type | Duration | Start | Finish | Predecessors | Total slack | Free slack | Resources | Work | Cost |
| --- | --- | --- | --- | --- | --- | --- | --- | --- | --- | --- | --- | --- |
| 28 | 3 | **Execution** |  | 122d? | 2015-04-02 | 2015-09-18 | 27 | 0d |  |  | 27632h | 2,907,600 |
| 29 | 3.1 | Resource Management |  | 122d? | 2015-04-02 | 2015-09-18 |  | 0d |  | Project manager; Assistant | 1952h | 219,600 |
| 30 | 3.2 | Cost Management |  | 122d? | 2015-04-02 | 2015-09-18 |  | 0d |  | Project manager; Assistant | 1952h | 219,600 |
| 31 | 3.3 | Risk Management |  | 122d? | 2015-04-02 | 2015-09-18 |  | 0d |  | Project manager; Assistant | 1952h | 219,600 |
| 32 | 3.4 | Quality Management |  | 122d? | 2015-04-02 | 2015-09-18 |  | 0d |  | Project manager; Assistant | 1952h | 219,600 |
| 33 | 3.5 | Change Management |  | 122d? | 2015-04-02 | 2015-09-18 |  | 0d |  | Consultant 1; Consultant 2; Consultant 3; Consultant 4; Consultant 9; Consultant 8; IT specialist 1; IT specialist 2; IT specialist 3 | 8784h | 988,200 |
| 34 | 3.6 | Development in India |  | 40d | 2015-04-20 | 2015-06-12 | 23 | 2d | 0d | IT specialist 3; IT specialist 4; IT specialist 5; IT specialist 1; IT specialist 2; IT specialist 6; IT specialist 7; IT specialist 8; IT specialist 9; IT specialist 10 | 3200h | 180,000 |
| 35 | 3.7 | Data Migration |  | 15d | 2015-04-02 | 2015-04-22 | 27 | 49d | 47d | Consultant 1; Consultant 2; Consultant 3; Consultant 4; Consultant 5; IT specialist 4; IT specialist 5 | 840h | 94,500 |
| 36 | 3.8 | Implementation of Test Environment |  | 3d | 2015-04-20 | 2015-04-22 | 23 | 39d | 37d | Consultant 1; Consultant 2; Consultant 3; Consultant 8; Consultant 9; IT specialist 1; IT specialist 2 | 168h | 18,900 |
| 37 | 3.9 | Testing |  | 10d | 2015-06-15 | 2015-06-26 | 36, 34 | 2d | 0d | Assistant; Consultant 1; Consultant 2; Consultant 3; Consultant 9; IT specialist 1; IT specialist 2 | 560h | 60,000 |
| 38 | 3.10 | Steering Committee Meeting 1 | milestone, manual | 0d | 2015-06-29 | 2015-06-29 | 37 |  |  |  |  |  |
| 39 | 3.11 | Implementation of Live System |  | 5d | 2015-06-29 | 2015-07-03 | 37, 35 | 2d | 0d | IT specialist 1; IT specialist 2; IT specialist 3; IT specialist 4; IT specialist 5; Consultant 7 | 240h | 27,000 |
| 40 | 3.12 | Pilot Running |  | 10d | 2015-07-06 | 2015-07-17 | 39 | 12d | 10d | Consultant 9; Consultant 10; Consultant 11; Consultant 12; Consultant 13; IT specialist 10; IT specialist 9 | 560h | 45,000 |
| 41 | 3.13 | Training |  | 20d | 2015-07-06 | 2015-07-31 | 39 | 2d | 0d | Assistant; Consultant 1; Consultant 2; Consultant 3; Consultant 4; Consultant 5; Consultant 6; Consultant 7; Consultant 8; Consultant 9; Consultant 10; Consultant 11; Consultant 13; Consultant 12; Project manager | 2400h | 270,000 |
| 42 | 3.14 | Steering Committee Meeting 2 | milestone, manual | 0d | 2015-08-03 | 2015-08-03 | 41 |  |  |  |  |  |
| 43 | 3.15 | Roll-Out |  | 20d | 2015-08-03 | 2015-08-28 | 41, 40 | 2d | 0d | Assistant; IT specialist 1; IT specialist 2; IT specialist 3; IT specialist 4; Project manager; Consultant 7 | 1120h | 126,000 |
| 44 | 3.16 | Scheduling Management |  | 122d? | 2015-04-02 | 2015-09-18 |  | 0d |  | Project manager; Assistant | 1952h | 219,600 |
| 45 | 4 | **project close-out** |  | 5d | 2015-08-31 | 2015-09-04 | 43 | 2d |  |  | 384h | 43,200 |
| 46 | 4.1 | Final Approval |  | 2d | 2015-08-31 | 2015-09-01 | 43 | 10d | 0d | Assistant; Consultant 1; Consultant 2; Consultant 3; Consultant 4; Consultant 5; Consultant 6; Consultant 7; Consultant 8; Consultant 9; Project manager; IT specialist 1; IT specialist 2; IT specialist 3; IT specialist 4 | 240h | 27,000 |
| 47 | 4.2 | Steering Committee Meeting 3 | milestone, manual | 0d | 2015-09-02 | 2015-09-02 | 46 |  |  |  |  |  |
| 48 | 4.3 | Final Project Report |  | 3d | 2015-09-02 | 2015-09-04 | 46 | 10d |  | Project manager; Assistant | 48h | 5,400 |
| 49 | 4.4 | Post Cost Analysis |  | 2d | 2015-09-02 | 2015-09-03 | 46 | 11d |  | Project manager; Assistant | 32h | 3,600 |
| 50 | 4.5 | Lessons Learned |  | 2d | 2015-09-01 | 2015-09-03 | 46 | 11d |  | Assistant; Consultant 1; Consultant 2; Consultant 3; Consultant 4; Consultant 5; Consultant 6; Consultant 7; Consultant 8; Consultant 9; Project manager; IT specialist 1; IT specialist 2; IT specialist 3; IT specialist 4 | 64h | 7,200 |

Notes:
- 33: Aspekte des Change Management in dieser Phase des Projektes beziehen sich darauf, dass Mitarbeiter motiviert werden und Ihnen die Vorteile des CRM klar gemacht werden, um sie für das Projekt zu motivieren.
- 38: Milestone 2
- 42: Milestone 3
- 47: Milestone 4
